# CTRP2-ProjectSchedule

Schedule from MS Project, 2011-08-03 to 2012-07-17, A marks actual dates.

## Calendars

- Standard: Mon-Fri 08:00-12:00, 13:00-17:00; Sat-Sun off. Exceptions (off unless hours are given): 2011-12-26 (Christmas Observed), 2012-01-02 (New Year Observed), 2012-01-16 (MLK's Birthda Observed).

## Resources

| Resource |
| --- |
| Bala |
| Smita |
| Nelli |
| Paula |
| Hugh |
| Steve Matyas |
| Todd |
| Steve L |
| Sohal |
| Harsha |
| Naveen |
| BDA Team |
| Systems Team |
| QA3 |
| QA4 |
| QA5 |
| Vrushali |
| Max |
| VCDE |
| Anu |
| rushali |
| CTEP |
| caXchange |
| C3PR |
| caAERS |
| PSC |
| LV |
| BDA |
| "C3PR |
| Documentation |
| caGrid |
| QA |
| BAM |
| Edmond |
| NCI |
| SAIC-F |
| Web Team |
| Bill Dyer |
| CCTS Team |
| John S |
| Patrick |
| Architects |
| Christo |
| John |
| Rhett |
| Nellie |
| Steve |
| Kalpesh |
| David L |
| Stevel L |
| Kumar C |
| Gia |
| Wendy |
| Raj |
| Steve M |
| Lauren |
| Systems |
| CTRO |
| Hannes |
| SMEs |
| Gisele |
| Joe |
| CTRP Dev team |
| CBIIT |
| All |
| Analysts |
| TBD |
| Charles |
| ESST |
| Developers |
| Lisa |
| Christophe |
| Krishna |
| QA1 |
| QA2 |
| David |
| Security |
| Arch |
| Tech Leads |
| Paula B |
| Kalpana |
| KK |
| Abe |
| Kim |
| Vijay |
| CAT |
| George |
| Larry |
| Michael O |
| Resource 1 |
| Resource 2 |
| Resource3 |
| Resource 4 |
| Resource 5 |
| Gisele S |
| Dianne R |
| HR |
| NA |
| SL |
| ScenPro |
| 5AM |
| TP |
| EM |
| KE |
| JM |
| DL |
| Paul |
| Michael |
| Eilis |
| Team |
| Dev team |
| Ram P |
| NIH 508 team |
| Bryan |
| Bill D |
| Quy |
| Andrew |
| Rashmi |
| Jacob |
| Winston |
| UPT Team |
| Curators |
| Jill |
| Juli |
| caIntegrator Team |
| JJ |
| Deb |
| Santosh |
| Mervi |
| ARB |
| Xiaopeng |
| Ye |
| JP |
| Shine |
| Adam |

## Schedule

| ID | WBS | Task | Type | Duration | Start | Finish | Predecessors | Complete | Remaining | Total slack | Constraint | Resources | Work | Actual work |
| --- | --- | --- | --- | --- | --- | --- | --- | --- | --- | --- | --- | --- | --- | --- |
| 1 | 1 | **CAARRAY 2.x** |  | 247d | 2011-08-03 A | 2012-07-17 |  | 73% | 65.87d | 0d | start no earlier than 2011-08-03 |  | 11213.6h | 5035.2h |
| 2 | 1.1 | **2.4.1** |  | 39d | 2011-08-10 A | 2011-10-03 |  | 99% | 0d | 0d | start no earlier than 2011-08-10 |  | 1000h | 68.8h |
| 3 | 1.1.1 | **2.4.1 RC6** |  | 25d | 2011-08-10 A | 2011-09-13 |  | 99% | 0d | 0d |  | Andrew; Quy; Rashmi | 600h |  |
| 4 | 1.1.1.1 | caArray Importer: Regression test on local tier (New) |  | 20d | 2011-08-10 A | 2011-09-06 A |  | 100% |  |  |  |  |  |  |
| 5 | 1.1.1.2 | caArray Importer: Test import on local tier (New) |  | 20d | 2011-08-10 A | 2011-09-06 A |  | 100% |  |  |  |  |  |  |
| 6 | 1.1.1.3 | API Partner Testing on STAGE |  | 20d | 2011-08-10 A | 2011-09-06 A |  | 100% |  |  |  |  |  |  |
| 7 | 1.1.1.4 | Section 508 compliance: Run scan and issue-manage. |  | 20d | 2011-08-10 A | 2011-09-06 A |  | 100% |  |  |  |  |  |  |
| 8 | 1.1.1.5 | Write Grid client to get expt and hyb counts for Ken Buetow (New) |  | 20d | 2011-08-10 A | 2011-09-06 A |  | 100% |  |  |  |  |  |  |
| 9 | 1.1.1.6 | Write and test QTP automated script to load TCGA data (New) |  | 20d | 2011-08-10 A | 2011-09-06 A |  | 100% |  |  |  |  |  |  |
| 10 | 1.1.1.7 | Bug fix for ARRAY-2059 that is a blocker for the TCGA data load |  | 20d | 2011-08-10 A | 2011-09-06 A |  | 100% |  |  |  |  |  |  |
| 11 | 1.1.1.8 | Section 508 compliance: Fix ARRAY-1911 to get 90% score |  | 20d | 2011-08-10 A | 2011-09-06 A |  | 100% |  |  |  |  |  |  |
| 12 | 1.1.1.9 | Decide on solution to TCGA data load issue (New) |  | 20d | 2011-08-10 A | 2011-09-06 A |  | 100% |  |  |  |  |  |  |
| 13 | 1.1.1.10 | Bug fix for ARRAY-2055 |  | 20d | 2011-08-10 A | 2011-09-06 A |  | 100% |  |  |  |  |  |  |
| 14 | 1.1.1.11 | Temporary bug fix for ARRAY-2053 |  | 25d | 2011-08-10 A | 2011-09-13 A |  | 100% |  |  |  |  |  |  |
| 15 | 1.1.1.12 | Test bug fixes on QA tier |  | 25d | 2011-08-10 A | 2011-09-13 A |  | 100% |  |  |  |  |  |  |
| 16 | 1.1.2 | **2.4.1 Deployment** |  | 14d | 2011-09-14 A | 2011-10-03 | 3 | 99% | 0d | 0d |  | Rashmi; Andrew; Quy | 400h | 68.8h |
| 17 | 1.1.2.1 | Regression testing on QA tier |  | 5d | 2011-09-14 A | 2011-09-20 A |  | 100% |  |  |  |  |  |  |
| 18 | 1.1.2.2 | Test bug fixes on STAGE |  | 5d | 2011-09-14 A | 2011-09-20 A |  | 100% |  |  |  |  |  |  |
| 19 | 1.1.2.3 | Regression testing on STAGE |  | 5d | 2011-09-21 A | 2011-09-27 A | 17 | 100% |  |  |  |  |  |  |
| 20 | 1.1.2.4 | Upload Release Artifacts |  | 2d | 2011-09-21 A | 2011-09-22 A | 17 | 100% |  |  |  |  |  |  |
| 21 | 1.1.2.5 | App Scan on STAGE |  | 3d | 2011-09-21 A | 2011-09-23 A | 17 | 100% |  |  |  | Systems | 24h | 24h |
| 22 | 1.1.2.6 | Add README_caArray_and_UPT.txt |  | 1d | 2011-09-26 A | 2011-09-26 A | 21 | 100% |  |  |  |  |  |  |
| 23 | 1.1.2.7 | Deploy to PRODUCTION |  | 5d | 2011-09-27 A | 2011-10-03 A | 22 | 100% |  |  |  | Systems | 40h | 40h |
| 24 | 1.2 | RELEASE 2.4.1 | milestone | 0d | 2011-09-30 A | 2011-09-30 A | 23 | 100% |  |  |  |  |  |  |

| ID | WBS | Task | Duration | Start | Finish | Predecessors | Complete | Remaining | Total slack | Constraint | Resources | Work | Actual work |
| --- | --- | --- | --- | --- | --- | --- | --- | --- | --- | --- | --- | --- | --- |
| 25 | 1.3 | **2.5.0** | 217d | 2011-09-14 A | 2012-07-17 | 3 | 60% | 86.34d | 0d |  |  | 10213.6h | 4966.4h |
| 26 | 1.3.1 | **Iterations M15-M17** | 52d | 2011-09-14 A | 2011-11-24 |  | 99% | 0d | 0d |  | Andrew; KK; Quy; Rashmi | 2016h | 352h |
| 27 | 1.3.1.1 | Merge in plug-in arch, file system storage, Jboss5 and get local CI build working (ARRAY-1804, ARRAY-1595, ARRAY-1896) | 10d | 2011-09-14 A | 2011-09-27 A |  | 100% |  |  |  |  |  |  |
| 28 | 1.3.1.2 | BDALite: Migrate caArray build from Ivy to Nexus (ARRAY-2073) (New) | 7d | 2011-09-28 A | 2011-10-06 A | 27 | 100% |  |  |  | Systems; KK | 112h | 112h |
| 29 | 1.3.1.3 | BDALite: Artifact configuration at build time and PTE form (ARRAY-2067, ARRAY-1967) | 7d | 2011-09-28 A | 2011-10-06 A | 27 | 100% |  |  |  |  |  |  |
| 30 | 1.3.1.4 | BDALite: Migrate BDA build from Ivy to Nexus (ARRAY-2085) (New) | 15d | 2011-10-07 A | 2011-10-27 A | 28 | 100% |  |  |  | Systems; KK | 240h | 240h |
| 31 | 1.3.1.5 | BDALite: Migrate to AntHill Pro 3 - Prerequisites (ARRAY-2103, ARRAY-2121) | 15d | 2011-10-07 A | 2011-10-27 A | 29 | 100% |  |  |  |  |  |  |
| 32 | 1.3.1.6 | Curation Tier upgrade to 2.4.1 | 3d | 2011-10-28 A | 2011-11-01 A | 30 | 100% |  |  |  |  |  |  |
| 33 | 1.3.1.7 | Merge in 2.4.1 fixes into 2.5.0 (ARRAY-2069) | 5d | 2011-10-28 A | 2011-11-03 A | 30 | 100% |  |  |  |  |  |  |
| 34 | 1.3.1.8 | Get CI build tested and working (ARRAY-2021, 2120, 2122, 2123, 2064, 2122, 1960, 2152) | 10d | 2011-11-04 A | 2011-11-17 A | 33 | 100% |  |  |  |  |  |  |
| 35 | 1.3.1.9 | Jboss 5.1 / Java 6 upgrade - Fix Installer (ARRAY-1567, 2124, 2125, 2144, 2145, 2141, 2142, 2147, 2148) | 5d | 2011-11-11 A | 2011-11-17 A | 34 | 100% |  |  |  |  |  |  |
| 36 | 1.3.1.10 | File system storage of raw files (transaction spanning DB and filesystem) (ARRAY-1752) | 5d | 2011-11-18 A | 2011-11-24 A | 35 | 100% |  |  |  |  |  |  |
| 37 | 1.3.1.11 | Xenoline: Data analysis and meetings (New) | 2d | 2011-11-18 A | 2011-11-21 A | 35 | 100% |  |  |  |  |  |  |
| 38 | 1.3.1.12 | TRANSCEND: Requirements meetings and test data set-up | 5d | 2011-11-18 A | 2011-11-24 A | 35 | 100% |  |  |  |  |  |  |
| 39 | 1.3.1.13 | Jboss 5.1 / Java 6 upgrade - Test 2.4.x to 2.5.0 migration path (ARRAY-2126, ARRAY-2127) | 5d | 2011-11-18 A | 2011-11-24 A | 35 | 100% |  |  |  |  |  |  |
| 40 | 1.3.2 | **Iteration M18** | 13d | 2011-11-25 A | 2011-12-13 A | 39 | 100% |  |  |  |  | 376h | 376h |
| 41 | 1.3.2.1 | Bug fixes (ARRAY-2165,2166) | 3d | 2011-11-25 A | 2011-11-29 A |  | 100% |  |  |  | KK | 24h | 24h |
| 42 | 1.3.2.2 | BDALite: AHP 3 prerequisite: Standalone liquibase upgrades (ARRAY-2105) (New) | 5d | 2011-11-30 A | 2011-12-06 A | 41 | 100% |  |  |  | KK; Systems | 80h | 80h |
| 43 | 1.3.2.3 | Orphaned experiments: Blocking issue for user (ARRAY-2183) (New) | 5d | 2011-11-25 A | 2011-12-01 A |  | 100% |  |  |  | Rashmi | 40h | 40h |
| 44 | 1.3.2.4 | Design for large import splitting into multiple transactions (ARRAY-2146) | 5d | 2011-11-25 A | 2011-12-01 A |  | 100% |  |  |  | Todd; Rashmi | 80h | 80h |
| 45 | 1.3.2.5 | Bug fixes (ARRAY-2167,2149) | 5d | 2011-12-07 A | 2011-12-13 A | 42 | 100% |  |  |  | KK | 40h | 40h |
| 46 | 1.3.2.6 | Design for remote file locations (ARRAY-2156) | 2d | 2011-12-12 A | 2011-12-13 A |  | 100% |  |  | start no earlier than 2011-12-12 | Todd | 16h | 16h |
| 47 | 1.3.2.7 | QA testing | 10d | 2011-11-25 A | 2011-12-08 A |  | 100% |  |  |  | Quy | 80h | 80h |
| 48 | 1.3.2.8 | BDALite: AHP 3: Database properties at build time (ARRAY-2197) (New) | 1d | 2011-12-07 A | 2011-12-07 A | 42 | 100% |  |  |  | Systems; KK | 16h | 16h |

| ID | WBS | Task | Duration | Start | Finish | Predecessors | Complete | Remaining | Total slack | Resources | Work | Actual work |
| --- | --- | --- | --- | --- | --- | --- | --- | --- | --- | --- | --- | --- |
| 49 | 1.3.3 | **Iteration M19** | 9d | 2011-12-14 A | 2011-12-27 A | 40 | 100% |  |  |  | 288h | 288h |
| 50 | 1.3.3.1 | Bug fixes for new Agilent import problems (ARRAY-2198, ARRAY-2203) (New) | 5d | 2011-12-14 A | 2011-12-20 A |  | 100% |  |  | KK; Todd | 80h | 80h |
| 51 | 1.3.3.2 | ARRAY-2159 - Splitting Imports: Utility classes to break up a MAGE-TAB set | 5d | 2011-12-14 A | 2011-12-20 A |  | 100% |  |  | KK; Todd | 80h | 80h |
| 52 | 1.3.3.3 | ARRAY-2187 - Splitting Imports: MAGE-TAB Transaction Set model and DAO | 4d | 2011-12-21 A | 2011-12-27 A | 51 | 100% |  |  | KK; Todd | 64h | 64h |
| 53 | 1.3.3.4 | ARRAY-2205 - BDALite: AHP3 troubleshooting (New) | 1d | 2011-12-14 A | 2011-12-14 A |  | 100% |  |  | KK; Systems | 16h | 16h |
| 54 | 1.3.3.5 | QA testing | 5d | 2011-12-14 A | 2011-12-20 A |  | 100% |  |  | Quy | 40h | 40h |
| 55 | 1.3.3.6 | Discuss TRANSCEND Data Authorization approach with ESSRT | 1d | 2011-12-14 A | 2011-12-14 A |  | 100% |  |  | Rashmi | 8h | 8h |
| 56 | 1.3.4 | **Iteration M20** | 9d | 2011-12-28 A | 2012-01-10 A | 49 | 100% |  |  |  | 504h | 504h |
| 57 | 1.3.4.1 | ARRAY-2217 - BDALite: Update bda-lite:database:update:prepare target to include the "environment" property (New) | 2d | 2011-12-28 A | 2011-12-29 A |  | 100% |  |  | KK; Systems | 32h | 32h |
| 58 | 1.3.4.2 | ARRAY-1968 - BDALite: AHP 3 build track troubleshooting (New) | 5d | 2011-12-30 A | 2012-01-06 A | 57 | 100% |  |  | KK; Systems | 80h | 80h |
| 59 | 1.3.4.3 | ARRAY-2188 - Splitting Imports: New state model | 4d | 2011-12-28 A | 2012-01-03 A |  | 100% |  |  | KK; Todd | 64h | 64h |
| 60 | 1.3.4.4 | Bug fixes for Illumina BGX, MageTabExporter and AssayType display (ARRAY-2202, 2181, 2204) (New) | 6d | 2011-12-28 A | 2012-01-05 A |  | 100% |  |  | KK; Todd | 96h | 96h |
| 61 | 1.3.4.5 | ARRAY-2208 - Improvement: Reduce CI build time for import tests | 2d | 2012-01-09 A | 2012-01-10 A | 58 | 100% |  |  | KK; Todd | 32h | 32h |
| 62 | 1.3.4.6 | QA Test Suite updates for 2.5.0: Splitting Imports (ARRAY-2206) | 5d | 2011-12-28 A | 2012-01-04 A |  | 100% |  |  | Quy | 40h | 40h |
| 63 | 1.3.4.7 | ARRAY-2219 - Onboard new software engineers | 5d | 2011-12-28 A | 2012-01-04 A |  | 100% |  |  | Paul; Winston; KK; Todd | 160h | 160h |
| 64 | 1.3.5 | **Iteration M21** | 9d | 2012-01-11 A | 2012-01-24 | 56 | 99% | 0.04d | 147d |  | 993.6h | 982.4h |
| 65 | 1.3.5.1 | ARRAY-2189 - Splitting Imports: Validate and Import transactions | 3d | 2012-01-11 A | 2012-01-13 A |  | 100% |  |  | KK; Todd; Paul; Winston | 96h | 96h |
| 66 | 1.3.5.2 | ARRAY-2190 - Splitting Imports: Modify import service to perform the split | 5d | 2012-01-11 A | 2012-01-18 A |  | 100% |  |  | KK; Todd; Paul; Winston | 160h | 160h |
| 67 | 1.3.5.3 | ARRAY-2199 - Splitting Imports: Hide split files from user | 4d | 2012-01-19 A | 2012-01-24 A | 66 | 100% |  |  | KK; Todd; Paul; Winston | 128h | 128h |
| 68 | 1.3.5.4 | ARRAY-2191 - Splitting Imports: Support SDRF where multiple rows reference the same data file | 1d | 2012-01-19 A | 2012-01-19 A | 66 | 100% |  |  | KK; Todd; Paul; Winston | 32h | 32h |
| 69 | 1.3.5.5 | ARRAY-2232 - Splitting Imports: Make Job Queue child-aware (New) | 3d | 2012-01-19 A | 2012-01-23 A | 66 | 100% |  |  | KK; Todd; Paul; Winston | 96h | 96h |
| 70 | 1.3.5.6 | Investigate Technology for Improved Upload (ARRAY-1899) - Pros and cons | 3d | 2012-01-11 A | 2012-01-13 A |  | 100% |  |  | Paul | 24h | 24h |
| 71 | 1.3.5.7 | ARRAY-2005 - Allow remote locations for native files (Won't Fix) | 1d | 2012-01-11 A | 2012-01-11 A |  | 100% |  |  | Rashmi | 8h | 8h |
| 72 | 1.3.5.8 | ARRAY-2214 - Bug: Experiments disappear after PROD-to-STAGE database copy. (New) | 2d | 2012-01-11 A | 2012-01-12 A |  | 100% |  |  | Systems; KK; Quy | 48h | 48h |
| 73 | 1.3.5.9 | ARRAY-2252 - Bug: AgilentFileImportIntegrationTest fails on trunk (New) | 3d | 2012-01-11 A | 2012-01-13 A |  | 100% |  |  | KK; Todd; Paul; Winston | 96h | 96h |
| 74 | 1.3.5.10 | ARRAY-2236,2237,2240 - Improvement: Reduce build time for Illumina and Affy validation/service tests | 1d | 2012-01-11 A | 2012-01-11 A |  | 100% |  |  | KK; Todd; Paul; Winston | 32h | 32h |
| 75 | 1.3.5.11 | ARRAY-2170 - Support: Build documentation/README out of date | 2d | 2012-01-11 A | 2012-01-12 A |  | 100% |  |  | Winston | 16h | 16h |
| 76 | 1.3.5.12 | ARRAY-2230 - Support: Initial investigation into building from 2.4.0 source (New) | 2d | 2012-01-11 A | 2012-01-12 A |  | 100% |  |  | KK | 16h | 16h |
| 77 | 1.3.5.13 | ARRAY-2250 - BDALite: AHP3 build of QA-VM failed due to missing Gforge library (New) | 1d | 2012-01-11 A | 2012-01-11 A |  | 100% |  |  | KK; Todd | 16h | 16h |
| 78 | 1.3.5.14 | ARRAY-2227 - BDALite: Move caArray-QA to AHP3 build/deploy track (New) | 1d | 2012-01-24 A | 2012-01-24 A | 81 | 100% |  |  | Quy; Systems; KK | 24h | 24h |
| 79 | 1.3.5.15 | ARRAY-2260 - BDALite: AHP3 database upgrade fails on QA-VM (New) | 2d | 2012-01-12 A | 2012-01-13 A | 77 | 100% |  |  | Systems; KK; Quy | 48h | 48h |
| 80 | 1.3.5.16 | ARRAY-2261 - BDALite: Cannot build from trunk via AHP3 on QA-VM (New) | 2d | 2012-01-17 A | 2012-01-18 A | 79 | 100% |  |  | Systems; KK; Quy | 48h | 48h |
| 81 | 1.3.5.17 | ARRAY-2262 - BDALite: Could not login to QA-VM after AHP3 build | 3d | 2012-01-19 A | 2012-01-23 A | 80 | 100% |  |  | Systems; KK; Quy | 72h | 72h |
| 82 | 1.3.5.18 | QA Test Plan Review (internal) | 2d | 2012-01-11 A | 2012-01-12 A |  | 100% |  |  | Quy | 16h | 16h |
| 83 | 1.3.5.19 | Coordinate release dates for caArray and caIntegrator | 1d | 2012-01-24 A | 2012-01-24 |  | 80% | 0.2d | 147d | Rashmi; caIntegrator Team; Juli; Mervi; JJ; Deb; Larry | 17.6h | 6.4h |

| ID | WBS | Task | Duration | Start | Finish | Predecessors | Complete | Constraint | Resources | Work | Actual work |
| --- | --- | --- | --- | --- | --- | --- | --- | --- | --- | --- | --- |
| 84 | 1.3.6 | **Iteration M22** | 10d | 2012-01-25 A | 2012-02-07 A | 64 | 100% |  |  | 920h | 920h |
| 85 | 1.3.6.1 | ARRAY-2270 - Clarify TRANSCEND security architecture with ESSRT. | 1d | 2012-01-25 A | 2012-01-25 A |  | 100% |  | Rashmi; Santosh | 16h | 16h |
| 86 | 1.3.6.2 | Prototype IE browser fallback for Improved Upload | 3d | 2012-01-25 A | 2012-01-27 A |  | 100% |  | Paul | 24h | 24h |
| 87 | 1.3.6.3 | ARRAY-2253 - Bug: caIntegrator cannot retrieve parsed data from caArray with Jboss 5 (New) | 2d | 2012-01-25 A | 2012-01-26 A |  | 100% |  | KK; Todd; Paul; Quy; caIntegrator Team | 80h | 80h |
| 88 | 1.3.6.4 | ARRAY-2231 - Bug: Experiment inconsistencies between Curation and PROD (New) | 1d | 2012-01-25 A | 2012-01-25 A |  | 100% |  | KK; Todd; Paul; Quy | 32h | 32h |
| 89 | 1.3.6.5 | ARRAY-2192 - Splitting Imports: Stop parent import job from Job Queue | 5d | 2012-01-25 A | 2012-01-31 A |  | 100% |  | KK; Todd; Paul; Quy | 160h | 160h |
| 90 | 1.3.6.6 | ARRAY-2193 - Splitting Imports: Resume of cancelled import job | 5d | 2012-02-01 A | 2012-02-07 A | 89 | 100% |  | KK; Todd; Paul; Quy | 160h | 160h |
| 91 | 1.3.6.7 | ARRAY-2194 - Splitting Imports: Resume of failed import job with problematic data files | 2d | 2012-01-25 A | 2012-01-26 A |  | 100% |  | KK; Todd; Paul; Quy | 64h | 64h |
| 92 | 1.3.6.8 | ARRAY-2195 - Splitting Imports: Resume of failed import job with problematic SDRF | 2d | 2012-01-25 A | 2012-01-26 A |  | 100% |  | KK; Todd; Paul; Quy | 64h | 64h |
| 93 | 1.3.6.9 | ARRAY-2233 - Splitting Imports: Support 2-colour designs | 1d | 2012-01-25 A | 2012-01-25 A |  | 100% |  | KK; Todd; Paul; Quy | 32h | 32h |
| 94 | 1.3.6.10 | ARRAY-2235 - Splitting Imports: Child files need to be cleaned up (New) | 1d | 2012-01-25 A | 2012-01-25 A |  | 100% |  | KK; Todd; Paul; Quy | 32h | 32h |
| 95 | 1.3.6.11 | ARRAY-2266: Regression Test 2.5.0 on QA tiers | 5d | 2012-01-25 A | 2012-01-31 A | 77, 78, 79, 80 | 100% |  | Quy; Systems | 80h | 80h |
| 96 | 1.3.6.12 | ARRAY-1692 - Security vulnerability fix by upgrading struts (New) | 3d | 2012-01-25 A | 2012-01-27 A |  | 100% |  | KK; Todd; Paul; Quy | 96h | 96h |
| 97 | 1.3.6.13 | ARRAY-2283 - BDALite: Sizing requirements for all tiers (New) | 1d | 2012-01-25 A | 2012-01-25 A |  | 100% |  | Rashmi; Quy; Systems; Xiaopeng; Juli | 40h | 40h |
| 98 | 1.3.6.14 | ARRAY-2271 - QA Test Plan Review (NCI) | 1d | 2012-02-07 A | 2012-02-07 A |  | 100% | start no earlier than 2012-02-07 | Quy; Juli; JJ; Deb; Larry | 40h | 40h |
| 99 | 1.3.7 | **Iteration M23** | 10d | 2012-02-08 A | 2012-02-21 A | 84 | 100% |  |  | 600h | 600h |
| 100 | 1.3.7.1 | ARRAY-2272 - BDALite: Unified target (New) | 2d | 2012-02-08 A | 2012-02-09 A |  | 100% |  | Systems; KK; Quy | 48h | 48h |
| 101 | 1.3.7.2 | ARRAY-2104 - BDALite: osgi plugin location (New) | 2d | 2012-02-10 A | 2012-02-13 A | 100 | 100% |  | Systems; KK; Quy | 48h | 48h |
| 102 | 1.3.7.3 | ARRAY-1627 - Part 1 of Resumable Uploads - Large Files, Multi-Select, Upload and Cancel | 10d | 2012-02-08 A | 2012-02-21 A |  | 100% |  | Todd; Paul; Quy | 240h | 240h |
| 103 | 1.3.7.4 | ARRAY-2310 - Meeting with Architecture Review Board re: Improved Uploads | 1d | 2012-02-15 A | 2012-02-15 A | 86 | 100% | start no earlier than 2012-02-15 | Rashmi; Paul; ARB | 24h | 24h |
| 104 | 1.3.7.5 | ARRAY-2311 - Re-run Section 508 compliance scan | 1d | 2012-02-08 A | 2012-02-08 A |  | 100% |  | Rashmi | 8h | 8h |
| 105 | 1.3.7.6 | ARRAY-2309 - UAT of large imports by curators (New) | 4d | 2012-02-14 A | 2012-02-17 A |  | 100% | start no earlier than 2012-02-14 | Curators; Rashmi | 64h | 64h |
| 106 | 1.3.7.7 | ARRAY-2295 - Patch 2.4.1 source code to point to ncisvn | 2d | 2012-02-14 A | 2012-02-15 A | 101 | 100% |  | KK; Quy; Systems | 48h | 48h |
| 107 | 1.3.7.8 | ARRAY-2312 - Bug triage | 3d | 2012-02-08 A | 2012-02-10 A |  | 100% |  | Juli; JJ; Quy; Rashmi; Paul | 120h | 120h |

| ID | WBS | Task | Duration | Start | Finish | Predecessors | Complete | Remaining | Total slack | Free slack | Constraint | Resources | Work | Actual work |
| --- | --- | --- | --- | --- | --- | --- | --- | --- | --- | --- | --- | --- | --- | --- |
| 108 | 1.3.8 | **Iteration M24** | 10d | 2012-02-22 A | 2012-03-06 A | 99 | 100% |  |  |  |  |  | 400h | 400h |
| 109 | 1.3.8.1 | TRANSCEND: Single Sign-on: Prototype CAS architecture | 7d | 2012-02-22 A | 2012-03-01 A |  | 100% |  |  |  |  | Paul | 56h | 56h |
| 110 | 1.3.8.2 | ARRAY-1627 - Part 2 of Resumable Uploads - Resume | 5d | 2012-02-22 A | 2012-02-28 A |  | 100% |  |  |  |  | KK; Quy | 80h | 80h |
| 111 | 1.3.8.3 | ARRAY-1806 - Ensure API works with storage engine SPI | 1d | 2012-02-29 A | 2012-02-29 A | 110 | 100% |  |  |  |  | KK; Todd; Quy | 24h | 24h |
| 112 | 1.3.8.4 | ARRAY-1391 - Support API access by Java 1.6 clients | 1d | 2012-03-01 A | 2012-03-01 A | 111 | 100% |  |  |  |  | KK; Todd; Ye | 24h | 24h |
| 113 | 1.3.8.5 | Estimate effort to upgrade to caGrid 1.4 or 1.5 (New) | 2d | 2012-03-02 A | 2012-03-05 A | 112 | 100% |  |  |  |  | KK; Todd; Quy | 48h | 48h |
| 114 | 1.3.8.6 | TRANSCEND: Automatic Refresh: Design API and logging | 2d | 2012-03-02 A | 2012-03-05 A | 109 | 100% |  |  |  |  | Todd; Quy; Paul | 48h | 48h |
| 115 | 1.3.8.7 | TRANSCEND: Single Sign-on: Demonstrate EJB CAS authentication in Prototype | 1d | 2012-02-22 A | 2012-02-22 A |  | 100% |  |  |  |  | Todd; Paul; Quy | 24h | 24h |
| 116 | 1.3.8.8 | Bug Fixes: ARRAY-2329,1609,1622,2129,2071 | 1d | 2012-03-06 A | 2012-03-06 A | 113 | 100% |  |  |  |  | KK; Todd; Quy | 24h | 24h |
| 117 | 1.3.8.9 | Demo large imports | 1d | 2012-02-22 A | 2012-02-22 A |  | 100% |  |  |  |  | Rashmi | 8h | 8h |
| 118 | 1.3.8.10 | UAT of large imports by curators (Continued) | 4d | 2012-02-29 A | 2012-03-05 A | 110 | 100% |  |  |  | start no earlier than 2012-02-14 | Curators; Rashmi | 64h | 64h |
| 119 | 1.3.9 | **Improved Uploads** | 17d | 2012-03-07 A | 2012-03-29 | 108 | 86% | 2.32d | 76.5d |  |  |  | 304h | 280h |
| 120 | 1.3.9.1 | ARRAY-1627 - Part 3 of Resumable Uploads - Not feasible after investigation | 14d | 2012-03-07 A | 2012-03-26 A |  | 100% |  |  |  |  | KK; Winston | 224h | 224h |
| 121 | 1.3.9.2 | ARRAY-2267 - Document any restrictions/assumptions for large data upload/import/download/export. | 3d | 2012-03-27 | 2012-03-29 | 120 |  |  | 11d |  |  | Paul | 24h |  |
| 122 | 1.3.9.3 | ARRAY-2269 - Document performance requirements for large data upload/import/download/export | 2d | 2012-03-07 A | 2012-03-08 A |  | 100% |  |  |  |  | Quy | 16h | 16h |
| 123 | 1.3.9.4 | Demo resumable uploads | 1d | 2012-03-13 A | 2012-03-13 A | 120 | 100% |  |  |  |  | Rashmi | 8h | 8h |
| 124 | 1.3.9.5 | UAT of resumable uploads by curators | 2d | 2012-03-13 A | 2012-03-14 A | 120 | 100% |  |  |  |  | Curators; Rashmi | 32h | 32h |
| 125 | 1.3.10 | **Maintenance** | 20.5d | 2012-03-07 A | 2012-04-04 | 108 | 40% | 12.3d | 73d |  |  |  | 400h | 220h |
| 126 | 1.3.10.1 | Configure STAGE tier with BDALite and Test (as part of ARRAY-1391 and ARRAY-2419) | 10d | 2012-03-07 A | 2012-03-20 |  | 75% | 2.5d | 72.7d | 0d |  | Rashmi; Systems; Quy; Paul | 280h | 200h |
| 127 | 1.3.10.2 | Support for next gen sequencing development by Columbia (Ongoing) | 5d | 2012-03-07 A | 2012-03-23 | 126 | 50% | 2.5d | 81d |  |  | Rashmi | 40h | 20h |
| 128 | 1.3.10.3 | ARRAY-2313 - Support testing by API partners (Ongoing) | 5d | 2012-03-26 | 2012-03-30 |  |  |  | 75.5d |  | start no earlier than 2012-03-26 | Rashmi | 40h |  |
| 129 | 1.3.10.4 | Bug Fixes (ARRAY-2414,2416) | 5d | 2012-03-26 | 2012-04-04 |  |  |  | 73d |  | start no earlier than 2012-03-26 | Adam | 40h |  |
| 130 | 1.3.11 | **Permissions Model (TRANSCEND)** | 18d | 2012-03-21 A | 2012-04-13 | 126 | 40% | 10.8d | 65.5d |  |  |  | 100h | 44h |
| 131 | 1.3.11.1 | ARRAY-1938 - Allow sample search by arbitrary characteristics on Permissions page | 5d | 2012-03-21 A | 2012-04-03 |  | 80% | 1d | 45.5d | 0d |  | Paul; Quy | 60h | 44h |
| 132 | 1.3.11.2 | Demo of Permissions Model to UCSF/TRANSCEND team | 5d | 2012-04-09 | 2012-04-13 |  |  |  | 65.5d |  | start no earlier than 2012-04-09 | Rashmi | 40h |  |

| ID | WBS | Task | Duration | Start | Finish | Predecessors | Total slack | Free slack | Constraint | Resources | Work |
| --- | --- | --- | --- | --- | --- | --- | --- | --- | --- | --- | --- |
| 133 | 1.3.12 | **Automatic Refresh (TRANSCEND)** | 13d | 2012-03-27 | 2012-04-12 |  | 0d |  |  |  | 200h |
| 134 | 1.3.12.1 | ARRAY-2273/1932 - Implement API to return whether experiment was changed in time period | 7d | 2012-03-27 | 2012-04-04 | 120 | 0d |  |  | Winston | 56h |
| 135 | 1.3.12.2 | Integration testing of Automatic Refresh with caIntegrator | 5d | 2012-04-05 | 2012-04-11 | 134 | 7.5d | 0d |  | Winston; Quy; caIntegrator Team | 120h |
| 136 | 1.3.12.3 | Demo of Automatic Refresh to UCSF/TRANSCEND team | 1d | 2012-04-12 | 2012-04-12 | 135 | 7.5d |  |  | JP; Shine; Rashmi | 24h |
| 137 | 1.3.13 | **Single Sign-on (TRANSCEND)** | 37.5d | 2012-04-03 | 2012-05-24 |  | 0.5d |  |  |  | 528h |
| 138 | 1.3.13.1 | ARRAY-1930 - Single sign-on between caArray and caIntegrator | 15d | 2012-04-03 | 2012-04-24 | 131 | 45.5d | 14.5d |  | Paul; Quy | 240h |
| 139 | 1.3.13.2 | Integration testing of Single sign-on | 5d | 2012-05-15 | 2012-05-21 | 138 | 38d | 0d | start no earlier than 2012-05-15 | caIntegrator Team; Paul; KK; Todd; Quy; Systems | 240h |
| 140 | 1.3.13.3 | Demo of Single Sign-on to UCSF/TRANSCEND team | 3d | 2012-05-22 | 2012-05-24 | 139 | 31d |  |  | caIntegrator Team; Rashmi | 48h |
| 141 | 1.3.14 | **Audit Trail (TRANSCEND)** | 15d | 2012-04-05 | 2012-04-25 |  | 0d |  |  |  | 200h |
| 142 | 1.3.14.1 | ARRAY-1931 - Sample deletions and data imports | 6d | 2012-04-05 | 2012-04-12 | 134 | 0d |  |  | Winston; Quy | 96h |
| 143 | 1.3.14.2 | ARRAY-1933 - Log visibility to Data Owner | 4d | 2012-04-13 | 2012-04-18 | 142 | 0d |  |  | Winston; Quy | 64h |
| 144 | 1.3.14.3 | Demo of Audit Trail to UCSF/TRANSCEND team | 5d | 2012-04-19 | 2012-04-25 | 143 | 59d |  |  | Rashmi | 40h |
| 145 | 1.3.15 | **UPT Configurability** | 7d | 2012-04-19 | 2012-04-27 |  | 0d |  |  |  | 128h |
| 146 | 1.3.15.1 | ARRAY-2258 - Test new UPT configurability to disallow caArray user group creation within UPT (New) | 2d | 2012-04-19 | 2012-04-20 | 143 | 0d |  |  | UPT Team; Quy; Winston | 48h |
| 147 | 1.3.15.2 | ARRAY-2259 - Update installer to configure UPT to disallow user group creation for caArray within UPT (New) | 5d | 2012-04-23 | 2012-04-27 | 146 | 0d |  |  | Winston; Quy | 80h |
| 148 | 1.3.16 | **Maintenance** | 8.5d | 2012-04-24 | 2012-05-04 |  | 0.5d |  |  |  | 160h |
| 149 | 1.3.16.1 | API (CQL) changes to account for file system storage (ARRAY-1729) | 6d | 2012-04-24 | 2012-05-02 | 138 | 0.5d |  |  | Paul | 48h |
| 150 | 1.3.16.2 | QA Test Suite updates for 2.5.0: Move Test Cases to Quality Center | 5d | 2012-04-30 | 2012-05-04 | 147 | 52d |  |  | Quy | 40h |
| 151 | 1.3.16.3 | ARRAY-1803 - Fix liquibase scripts to eliminate two-step installation process | 3d | 2012-04-30 | 2012-05-02 | 147 | 0d |  |  | Winston; Quy; Systems | 72h |
| 152 | 1.3.17 | Bug Fixes | 10d | 2012-05-03 | 2012-05-16 | 149, 151 | 0d |  |  | Paul; Quy; KK; Todd | 320h |
| 153 | 1.3.18 | **Beta 1** | 10d | 2012-05-17 | 2012-05-30 | 152 | 0d |  |  |  | 440h |
| 154 | 1.3.18.1 | Backup and replication for file system - NCI tiers and local installer documentation (ARRAY-1809) | 9d | 2012-05-17 | 2012-05-29 |  | 1d |  |  | KK; Systems | 144h |
| 155 | 1.3.18.2 | Bug Fixes | 9d | 2012-05-17 | 2012-05-29 |  | 0d |  |  | KK; Todd; Paul; Quy | 288h |
| 156 | 1.3.18.3 | Deployment: Deploy Beta 1 to STAGE. | 1d | 2012-05-30 | 2012-05-30 | 155 | 0d |  |  | Systems | 8h |

| ID | WBS | Task | Duration | Start | Finish | Predecessors | Total slack | Free slack | Resources | Work |
| --- | --- | --- | --- | --- | --- | --- | --- | --- | --- | --- |
| 157 | 1.3.19 | **Release Candidate 1** | 10d | 2012-05-31 | 2012-06-13 | 153 | 0d |  |  | 472h |
| 158 | 1.3.19.1 | Deployment: Run security app scan on Beta 1. | 3d | 2012-05-31 | 2012-06-04 |  | 7d |  | Systems | 24h |
| 159 | 1.3.19.2 | STAGE Regression testing of Beta 1. | 5d | 2012-05-31 | 2012-06-06 |  | 2d | 0d | Quy | 40h |
| 160 | 1.3.19.3 | Installer testing of Beta 1. | 3d | 2012-06-07 | 2012-06-11 | 159 | 2d |  | Quy | 24h |
| 161 | 1.3.19.4 | Support Beta 1 testing by API partners. | 5d | 2012-05-31 | 2012-06-06 |  | 5d |  | Rashmi | 40h |
| 162 | 1.3.19.5 | Documentation: Send User's Guide changes to Jill. | 2d | 2012-05-31 | 2012-06-01 |  | 8d |  | Rashmi | 16h |
| 163 | 1.3.19.6 | ARRAY-2092 - Documentation: Send Installation Guide changes to Jill. | 4d | 2012-05-31 | 2012-06-05 |  | 6d |  | KK | 32h |
| 164 | 1.3.19.7 | Bug Fixes | 9d | 2012-05-31 | 2012-06-12 |  | 0d |  | KK; Todd; Paul; Quy | 288h |
| 165 | 1.3.19.8 | Deployment: Deploy RC1 to STAGE. | 1d | 2012-06-13 | 2012-06-13 | 164 | 0d |  | Systems | 8h |
| 166 | 1.3.20 | **Release Candidate 2** | 10d | 2012-06-14 | 2012-06-27 | 157 | 0d |  |  | 512h |
| 167 | 1.3.20.1 | Deployment: Run security app scan on RC1. | 3d | 2012-06-14 | 2012-06-18 |  | 7d |  | Systems | 24h |
| 168 | 1.3.20.2 | STAGE testing of RC1. | 3d | 2012-06-14 | 2012-06-18 |  | 7d |  | Quy | 24h |
| 169 | 1.3.20.3 | Support RC1 testing by API partners. | 3d | 2012-06-14 | 2012-06-18 |  | 7d |  | Rashmi | 24h |
| 170 | 1.3.20.4 | Deployment: Create skeleton Gforge release package and release notes | 2d | 2012-06-14 | 2012-06-15 |  | 8d |  | Rashmi | 16h |
| 171 | 1.3.20.5 | Deployment: Point application to draft release notes | 4d | 2012-06-14 | 2012-06-19 |  | 6d |  | KK | 32h |
| 172 | 1.3.20.6 | Bug Fixes - only Blocker and Critical | 8d | 2012-06-14 | 2012-06-25 |  | 0d |  | KK; Todd; Paul; Quy | 256h |
| 173 | 1.3.20.7 | Documentation: Finish Draft User's Guide. | 4d | 2012-06-14 | 2012-06-19 |  | 4d | 0d | Jill | 32h |
| 174 | 1.3.20.8 | Documentation: Review Draft User's Guide. | 2d | 2012-06-20 | 2012-06-21 | 173 | 4d |  | Rashmi | 16h |
| 175 | 1.3.20.9 | Documentation: Finish Draft Installation Guide. | 4d | 2012-06-14 | 2012-06-19 |  | 4d | 0d | Jill | 32h |
| 176 | 1.3.20.10 | Documentation: Review Draft Installation Guide. | 2d | 2012-06-20 | 2012-06-21 | 175 | 4d |  | KK; Quy | 32h |
| 177 | 1.3.20.11 | Deployment: Deploy RC2 to STAGE. | 2d | 2012-06-26 | 2012-06-27 | 172 | 0d |  | Systems | 16h |
| 178 | 1.3.20.12 | Deployment: Send Draft release notes to Juli to send to Communications Office | 1d | 2012-06-14 | 2012-06-14 |  | 9d |  | Rashmi | 8h |
| 179 | 1.3.21 | **Release Candidate 3** | 10d | 2012-06-28 | 2012-07-11 | 166 | 0d |  |  | 312h |
| 180 | 1.3.21.1 | STAGE testing of RC2 | 2d | 2012-06-28 | 2012-06-29 |  | 8d |  | Quy | 16h |
| 181 | 1.3.21.2 | Documentation: Finish final User's Guide. | 2d | 2012-06-28 | 2012-06-29 |  | 7d | 0d | Jill | 16h |
| 182 | 1.3.21.3 | Documentation: Review final User's Guide. | 1d | 2012-07-02 | 2012-07-02 | 181 | 7d |  | Rashmi | 8h |
| 183 | 1.3.21.4 | Documentation: Finish final Installation Guide. | 2d | 2012-06-28 | 2012-06-29 |  | 7d | 0d | Jill | 16h |
| 184 | 1.3.21.5 | Documentation: Review final Installation Guide. | 1d | 2012-07-02 | 2012-07-02 | 183 | 7d |  | KK; Quy | 16h |
| 185 | 1.3.21.6 | Bug Fixes - only Blockers | 5d | 2012-06-28 | 2012-07-04 |  | 0d |  | KK; Todd; Paul; Quy | 160h |
| 186 | 1.3.21.7 | Deployment: Deploy RC3 (GA) to STAGE. | 2d | 2012-07-05 | 2012-07-06 | 185 | 0d |  | Systems | 16h |
| 187 | 1.3.21.8 | Deployment: Run security app scan on RC3 (GA) | 2d | 2012-07-09 | 2012-07-10 | 186 | 1d |  | Systems | 16h |
| 188 | 1.3.21.9 | STAGE testing of RC3 (GA) | 3d | 2012-07-09 | 2012-07-11 | 186 | 0d |  | Quy | 24h |
| 189 | 1.3.21.10 | Deployment: Create GA release artifacts and upload to Gforge. | 1d | 2012-06-28 | 2012-06-28 |  | 9d |  | Rashmi | 8h |
| 190 | 1.3.21.11 | Deployment: Support GA testing by API partners. | 2d | 2012-06-28 | 2012-06-29 |  | 8d |  | Rashmi | 16h |

| ID | WBS | Task | Type | Duration | Start | Finish | Predecessors | Total slack | Resources | Work |
| --- | --- | --- | --- | --- | --- | --- | --- | --- | --- | --- |
| 191 | 1.3.22 | **Deployment** |  | 4d | 2012-07-12 | 2012-07-17 | 179 | 0d |  | 40h |
| 192 | 1.3.22.1 | Deployment: Deploy GA to PRODUCTION |  | 3d | 2012-07-12 | 2012-07-16 | 158 | 0d | Systems | 24h |
| 193 | 1.3.22.2 | Deployment: Update product landing page |  | 1d | 2012-07-12 | 2012-07-12 |  | 3d | Rashmi | 8h |
| 194 | 1.3.22.3 | Deployment: Juli announces the release to the community |  | 1d | 2012-07-17 | 2012-07-17 | 192 | 0d | Juli | 8h |
| 195 | 1.4 | RELEASE 2.5.0 | milestone | 0d | 2012-07-17 | 2012-07-17 | 191 | 0d |  |  |
| 197 | 1.5 | NOTE: New items identified during the course of the contract are highlighted in yellow | milestone | 0d | 2011-08-03 | 2011-08-03 |  | 269d |  |  |
| 198 | 1.6 | NOTE: External dependencies are in Red in the Resource Names column | milestone | 0d | 2011-08-03 | 2011-08-03 |  | 269d |  |  |
